# openETCS-sutbask

How a schedule from MS Project changed from version to version. A marks actual dates.

## Version 1 (saved 2013-02-04)

Note of the change: Creation of a first MS Project Plan for WP7

| ID | WBS | Task | Duration | Start | Finish | Predecessors | Total float | Constraint |
| --- | --- | --- | --- | --- | --- | --- | --- | --- |
| 1 | 1 | **WP2** | 60d | 2012-10-10 | 2013-01-01 |  | 16d |  |
| 2 |  | WP2 dummy | 3mo | 2012-10-10 | 2013-01-01 |  | 16d | finish no earlier than 2013-01-01 |
| 3 |  | WP2: Small representative subset of ERTMS requirements in order to evaluate tools/languages | 0d | 2013-01-01 | 2013-01-01 | 2 | 16d |  |
| 4 |  | WP2: List of suitable means of description | 0d | 2013-01-01 | 2013-01-01 | 2 | 16d |  |
| 5 |  | WP2: List of suitable tools (based on State of the Art Analysis) | 0d | 2013-01-01 | 2013-01-01 | 2 | 176d |  |
| 6 |  | WP2: List of target platforms, based on the tools being evaluated (1.2) | 0d | 2013-01-01 | 2013-01-01 | 2 | 96d |  |
| 7 |  | WP2: Preliminary requirements | 0d | 2013-01-01 | 2013-01-01 | 2 | 16d |  |
| 8 |  | WP2: Requirements | 0d | 2013-01-01 | 2013-01-01 | 2 | 16d |  |
| 9 |  | WP2: Definition of method / process | 0d | 2013-01-01 | 2013-01-01 | 2 | 156d |  |
| 10 | 2 | **WP7: Toolchain** | 316d | 2013-01-02 | 2014-03-19 |  | 0d |  |
| 11 | 2.1 | **7.1 - Primary Tool Chain Analyses and Recommendations** | 140d | 2013-01-02 | 2013-07-16 |  | 16d |  |
| 12 | 2.1.1 | **T7.1.1. - Identify and define the potential means of description** | 120d | 2013-01-02 | 2013-06-18 | 4, 3, 7, 8 | 16d |  |
| 13 |  | O7.1.1 Formal Model representing the sample spec, one for each candidate | 4mo | 2013-01-02 | 2013-04-23 |  | 196d | start no earlier than 2013-01-01 |
| 14 |  | O7.1.2 Documentation of the changes to each means of description used (if any) | 1mo | 2013-04-24 | 2013-05-21 | 13 | 216d |  |
| 15 |  | O7.1.3 Evaluation of the models against the WP2 requirements | 1mo | 2013-04-24 | 2013-05-21 | 13 | 196d |  |
| 16 |  | O7.1.4 Decision on the final means of description choice(s) | 1mo | 2013-05-22 | 2013-06-18 | 15 | 196d |  |
| 17 | 2.1.2 | **T7.1.2 - Identify and compare existing modelling tools** | 60d | 2013-04-24 | 2013-07-16 | 5, 7, 8 | 76d |  |
| 18 |  | O7.1.6 Documentation of the changes to each tool (if any) | 1mo | 2013-04-24 | 2013-05-21 | 13 | 296d |  |
| 19 |  | O7.1.7 Evaluation of the tools against the WP2 requirements | 1mo | 2013-04-24 | 2013-05-21 | 13 | 276d |  |
| 20 |  | D7.1 Report on the final choice(s) for the primary tool chain (means of description, tool and platform) | 1mo | 2013-06-19 | 2013-07-16 | 19, 16 | 256d |  |
| 21 | 2.1.3 | **T7.1.3 Identify the tool platform** | 40d | 2013-04-24 | 2013-06-18 | 6, 7, 8 | 16d |  |
| 22 |  | O7.1.9 Evaluation of each tool platform against WP2 requirements, independent of target tool | 1mo | 2013-04-24 | 2013-05-21 | 13 | 196d |  |
| 23 |  | O7.1.10 Evaluation of tool platform in the context of specific target tools | 1mo | 2013-04-24 | 2013-05-21 | 13 | 196d |  |
| 24 |  | O7.1.11 Selection of Tool Platform (and reasoning) | 1mo | 2013-05-22 | 2013-06-18 | 23, 22 | 196d |  |
| 25 | 2.2 | **T7.2 - Secondary Tools Analyses and Recommendations** | 124d | 2013-04-18 | 2013-10-08 |  | 0d |  |
| 26 | 2.2.1 | **T7.2.1 - Identify and define the supporting tools and methods** | 80d | 2013-04-24 | 2013-08-13 | 4, 3, 7, 9, 16FS-3mo, 13 | 156d |  |
| 27 |  | O7.2.1 Evaluation of supporting tools and methods against the WP2 requirements and task 1 choices | 3mo | 2013-04-24 | 2013-07-16 | 13 | 336d |  |
| 28 |  | D7.2 Report on all aspects of secondary tooling (results of T7.2) | 1mo | 2013-07-17 | 2013-08-13 | 27 | 336d |  |
| 29 | 2.2.2 | **T7.2.2 - Model Transformation and Code Generation** | 80d | 2013-06-19 | 2013-10-08 | 8, 16 | 16d |  |
| 30 |  | O7.2.3 Model Transformation Strategy | 4mo | 2013-06-19 | 2013-10-08 |  | 196d |  |
| 31 |  | O7.2.4 Code Generation Strategy | 4mo | 2013-06-19 | 2013-10-08 |  | 196d |  |
| 32 | 2.2.3 | **T7.2.3 - Requirement traceability** | 80d | 2013-06-19 | 2013-10-08 | 8, 16 | 36d |  |
| 33 |  | O7.2.5 Captured and organized designer requirements | 4mo | 2013-06-19 | 2013-10-08 |  | 216d |  |
| 34 | 2.2.4 | **T7.2.4 - Validation and Verification Tools** | 60d | 2013-04-18 | 2013-07-10 | 8, 57, 61 | 0d |  |
| 35 |  | O7.2.6 V&V tool choice | 3mo | 2013-04-18 | 2013-07-10 |  | 0d |  |
| 36 |  | O7.2.7 Test automation tool choice with experience report | 3mo | 2013-04-18 | 2013-07-10 |  | 80d |  |
| 37 | 2.2.5 | **T7.2.5 - Safety analyses Tools** | 100d | 2013-04-24 | 2013-09-10 | 8, 62, 13 | 136d |  |
| 38 |  | O7.2.8 Safety analyses tools choices | 5mo | 2013-04-24 | 2013-09-10 |  | 316d |  |
| 39 | 2.3 | **T7.3 - Define and Develop Tool Chain** | 120d | 2013-06-19 | 2013-12-03 |  | 16d |  |
| 40 | 2.3.1 | **T7.3.1 - Overall Tool Architecture** | 84d | 2013-07-11 | 2013-11-05 | 13, 14, 16, 15, 24, 35 | 0d |  |
| 41 |  | O7.3.1 Tool chain development plan (or equivalent) | 1mo | 2013-10-09 | 2013-11-05 | 18, 30, 31, 35, 36, 20 | 16d |  |
| 42 |  | O7.3.2 Specification of tool interoperability mechanisms | 1mo | 2013-07-11 | 2013-08-07 |  | 80d |  |
| 43 |  | O7.3.3 Guideline for developing the tool chain according to CELENEC | 3mo | 2013-07-11 | 2013-10-02 |  | 0d |  |
| 44 | 2.3.2 | **T7.3.2 - Development Infrastructure** | 40d | 2013-06-19 | 2013-08-13 | 9, 33SS | 36d |  |
| 45 |  | O7.3.3 Specification of primary and support tool chain architecture and its embedding into the platform | 1mo | 2013-06-19 | 2013-07-16 |  | 276d |  |
| 46 |  | O7.3.4 Infrastructure evolution strategy | 2mo | 2013-06-19 | 2013-08-13 |  | 216d |  |
| 47 | 2.3.3 | **T7.3.3 - Decomposition and Distribution of work** | 40d | 2013-08-14 | 2013-10-08 | 24, 46 | 36d |  |
| 48 |  | O7.3.6 Tool chain qualification test suite | 1mo | 2013-08-14 | 2013-09-10 |  | 236d |  |
| 49 |  | D7.3 Tool Chain Qualification Process Description | 2mo | 2013-08-14 | 2013-10-08 |  | 216d |  |
| 50 | 2.3.4 | **T7.3.4 - Tool chain development** | 20d | 2013-11-06 | 2013-12-03 | 41, 42, 46, 48, 53SS | 16d |  |
| 51 |  | D7.4 Tool chain first release | 1mo | 2013-11-06 | 2013-12-03 | 40, 44, 47 | 16d |  |
| 52 | 2.4 | **T7.4 - Develop Open Source Ecosystem** | 208d | 2013-06-01 | 2014-03-19 |  | 0d |  |
| 53 |  | T7.4.1 - Develop Open Source Ecosystem | 6mo | 2013-10-03 | 2014-03-19 | 43 | 0d | start no earlier than 2012-07-01 |
| 54 |  | D7.5 Ecosystem Artefacts | 0d | 2013-06-01 | 2013-06-01 |  | 388d | finish no earlier than 2013-06-01 |
| 55 | 3 | **WP3** | 284d | 2013-01-24 | 2014-02-25 |  | 16d |  |
| 56 |  | WP3 dummy (Outputs for WP7) | 12mo | 2013-01-24 | 2013-12-25 |  | 60d |  |
| 57 |  | WP3 formalized API | 0d | 2013-01-24 | 2013-01-24 | 56SS | 60d |  |
| 58 |  | WP3 dummy (Inputs from WP7) | 3mo | 2013-12-04 | 2014-02-25 | 51 | 16d |  |
| 59 | 4 | **WP4** | 244d? | 2013-01-24 | 2013-12-31 |  | 0d |  |
| 60 |  | WP4 dummy (Outputs for WP7) | 3mo | 2013-01-24 | 2013-04-17 |  | 0d |  |
| 61 |  | WP4: Those sufficient elements of WP4 V&V Plan to evaluate tools | 0d | 2013-04-17 | 2013-04-17 | 60 | 0d |  |
| 62 |  | WP4: Those sufficient elements of WP4 Safety case to evaluate tools | 0d | 2013-04-17 | 2013-04-17 | 60 | 140d |  |
| 63 |  | WP4 dummy (Inputs from WP7) | 3mo? | 2013-10-09 | 2013-12-31 | 48, 49 | 56d |  |
| 64 |  | itea | 0d | 2013-08-13 | 2013-08-13 | 20, 54, 28 | 336d |  |

## Version 2 (saved 2013-02-13)

Note of the change: Update of Schedule

Last finish 2014-03-19 → 2014-06-27 (+100d).

Added:

| ID | Task | Duration | Start | Finish | Predecessors |
| --- | --- | --- | --- | --- | --- |
| 3 | D2.5: Methods and tools benchmarking methodology | 99d | 2013-01-15 | 2013-05-31 |  |
| 5 | D 2.5b: intermediate DMethods and tools benchmarking methodology | 0d | 2013-03-15 | 2013-03-15 |  |
| 6 | D 2.5c: Final Methods and tools benchmarking methodology | 0d | 2013-05-31 | 2013-05-31 |  |
| 7 | D2.1: Report on existing methodologies | 53d | 2013-01-02 | 2013-03-15 |  |
| 9 | D2.1b: Report on existing methodologies (intermediate) | 0d | 2013-03-15 | 2013-03-15 |  |
| 10 | D2.1: Report on existing methodologies (final) | 0d | 2013-03-15 | 2013-03-15 |  |
| 11 | D2.2: Set of requirements to be fulfilled according to CENELEC standards (state-of-the-art) | 1d? | 2013-01-24 | 2013-01-24 |  |
| 13 | D2.2a: Set of requirements to be fulfilled according to CENELEC standards (state-of-the-art) | 0d | 2013-01-15 | 2013-01-15 |  |
| 14 | D2.2b: Set of requirements to be fulfilled according to CENELEC standards (state-of-the-art) | 0d | 2013-03-15 | 2013-03-15 |  |
| 15 | D2.2c: Set of requirements to be fulfilled according to CENELEC standards (state-of-the-art) | 0d | 2013-05-31 | 2013-05-31 |  |
| 16 | D2.3: Definition of the overall process for the formal description of ETCS and the rail system it works in | 98d | 2013-01-15 | 2013-05-31 |  |
| 18 | D 2.3a: preliminary Definition of the overall process for the formal description of ETCS and the rail system it works in | 0d | 2013-01-15 | 2013-01-15 |  |
| 19 | D 2.3b: intermediate Definition of the overall process for the formal description of ETCS and the rail system it works in | 0d | 2013-03-15 | 2013-03-15 |  |
| 20 | D 2.3c: Final Definition of the overall process for the formal description of ETCS and the rail system it works in | 0d | 2013-05-31 | 2013-05-31 |  |
| 21 | **D2.4: Definition of the methods used to perform the formal description** | 98d | 2013-01-15 | 2013-05-31 |  |
| 22 | D 2.4a: preliminary Definition of the methods used to perform the formal description | 0d | 2013-01-15 | 2013-01-15 |  |
| 23 | D 2.4b: intermediate Definition of the methods used to perform the formal description | 0d | 2013-03-15 | 2013-03-15 |  |
| 24 | D 2.4c: Final Definition of the methods used to perform the formal description | 0d | 2013-05-31 | 2013-05-31 |  |
| 25 | D2.6: Set of requirements for the model used and the modeling process: | 98d | 2013-01-15 | 2013-05-31 |  |
| 27 | D 2.5b: intermediate Set of requirements for the model used and the modeling process: | 0d | 2013-03-15 | 2013-03-15 |  |
| 29 | **D2.7: Set of requirements for API:** | 98d | 2013-01-15 | 2013-05-31 |  |
| 30 | D 2.7a: preliminary Set of requirements for API: | 0d | 2013-01-15 | 2013-01-15 |  |
| 32 | D 2.7b: intermediate Set of requirements for API: | 0d | 2013-03-15 | 2013-03-15 |  |
| 33 | D 2.7c Final Set of requirements for API: | 0d | 2013-05-31 | 2013-05-31 |  |
| 34 | **D2.8: Set of requirements for the tools used:** | 98d | 2013-01-15 | 2013-05-31 |  |
| 35 | D 2.8a: preliminary Set of requirements for the tools used: | 0d | 2013-01-15 | 2013-01-15 |  |
| 36 | D 2.8b: intermediate Set of requirements for the tools used: | 0d | 2013-03-15 | 2013-03-15 |  |
| 37 | D 2.8c final Set of requirements for the tools used: | 0d | 2013-05-31 | 2013-05-31 |  |
| 38 | **D2.9: Set of requirements for the verification and validation process:** | 98d | 2013-01-15 | 2013-05-31 |  |
| 39 | D2.9a: preliminary Set of requirements for the verification and validation process: | 0d | 2013-01-15 | 2013-01-15 |  |
| 40 | D2.9b: intermediate Set of requirements for the verification and validation process: | 0d | 2013-03-15 | 2013-03-15 |  |
| 41 | D2.9c: final Set of requirements for the verification and validation process: | 0d | 2013-05-31 | 2013-05-31 |  |
| 52 | O7.1.8 Decision on final tool choice(s) | 1mo | 2013-10-21 | 2013-11-15 | 51 |
| 61 | O7.2.2 Decision on the supporting tool coice(s) | 1mo | 2013-12-16 | 2014-01-10 | 60 |
| 81 | O7.3.5 Tool chain infrastructure maintenance | 1mo | 2013-11-18 | 2013-12-13 |  |
| 85 | O7.3.7 Tool chain maintenance and debug & continuously | 6mo | 2014-01-13 | 2014-06-27 |  |

Changed:

| ID | Task | Predecessors |
| --- | --- | --- |
| 49 | **T7.1.2 - Identify and compare existing modelling tools** | 12, 26, 28 → 12, 26, 28, 8 |
| 54 | **T7.1.3 Identify the tool platform** | 17, 26, 28 → 17, 26, 28, 8 |
| 59 | **T7.2.1 - Identify and define the supporting tools and methods** | 8, 4, 26, 31, 48FS-3mo, 45 → 8, 4, 26, 31, 48FS-3mo, 45, 18 |
| 78 | **T7.3.2 - Development Infrastructure** | 31, 67SS → 31, 67SS, 18 |
